# 前端项目计划

Schedule from MS Project, 2012-09-17 to 2012-12-19, costs in ¥.
Windsoft

## Calendars

- 标准: Mon-Fri 08:00-12:00, 13:00-17:00; Sat-Sun off. Exceptions (off unless hours are given): 2012-09-29 08:00-12:00, 13:00-17:00 (国庆补假), 2012-09-30 to 2012-10-07 (国庆放假), 2012-10-08 08:00-12:00, 13:00-17:00 (国庆补假).

## Resources

| Resource |
| --- |
| 朱能 |
| 刘伟 |
| 任雷 |
| 高翔 |

## Schedule

| ID | WBS | Task | Duration | Start | Finish | Predecessors | Total slack | Free slack | Resources | Work | Cost |
| --- | --- | --- | --- | --- | --- | --- | --- | --- | --- | --- | --- |
| 1 | 1 | **星际** | 64d | 2012-09-17 | 2012-12-19 |  | 0d |  |  | 1712h | 258,000 |
| 2 | 1.1 | **第一阶段** | 9d | 2012-09-17 | 2012-09-27 |  | 1d |  |  | 72h | 13,000 |
| 3 | 1.1.1 | 服务器通讯调试 | 2d | 2012-09-17 | 2012-09-18 |  | 1d | 0d | 朱能 | 16h | 2,000 |
| 4 | 1.1.2 | 登陆注册 | 1d | 2012-09-19 | 2012-09-19 | 3 | 1d | 0d | 朱能 | 8h | 1,000 |
| 5 | 1.1.3 | 主场景 | 4d | 2012-09-20 | 2012-09-25 | 4 | 1d | 0d | 朱能 | 32h | 6,000 |
| 6 | 1.1.4 | 建筑建造升级 | 2d | 2012-09-26 | 2012-09-27 | 5 | 1d | 0d | 朱能 | 16h | 4,000 |
| 7 | 1.2 | **第二阶段** | 32d | 2012-09-28 | 2012-11-16 |  | 1d |  |  | 656h | 59,000 |
| 8 | 1.2.1 | 总览和荣誉 | 4d | 2012-09-28 | 2012-10-09 | 6 | 23d | 0d | 刘伟 | 32h | 3,000 |
| 9 | 1.2.2 | 时间机器 | 3d | 2012-10-10 | 2012-10-12 | 8 | 23d | 0d | 刘伟 | 24h | 2,000 |
| 10 | 1.2.3 | 采矿厂 | 4d | 2012-10-15 | 2012-10-18 | 9 | 23d | 0d | 刘伟 | 32h | 2,000 |
| 11 | 1.2.4 | 科学院 | 4d | 2012-10-19 | 2012-10-24 | 10 | 23d | 0d | 刘伟 | 32h | 3,000 |
| 12 | 1.2.5 | **仓库** | 12d | 2012-09-28 | 2012-10-19 |  | 31d |  |  | 96h | 5,000 |
| 13 | 1.2.5.1 | 查看、捐献 | 4d | 2012-09-28 | 2012-10-09 | 6 | 31d | 0d | 任雷 | 32h | 2,000 |
| 14 | 1.2.5.2 | 图纸学习 | 4d | 2012-10-10 | 2012-10-15 | 13 | 31d | 0d | 任雷 | 32h | 1,000 |
| 15 | 1.2.5.3 | 道具使用 | 4d | 2012-10-16 | 2012-10-19 | 14 | 31d | 0d | 任雷 | 32h | 2,000 |
| 16 | 1.2.6 | **军工厂** | 12d | 2012-10-22 | 2012-11-06 |  | 31d |  |  | 96h | 7,000 |
| 17 | 1.2.6.1 | 战车、武器 | 4d | 2012-10-22 | 2012-10-25 | 15 | 31d | 0d | 任雷 | 32h | 2,000 |
| 18 | 1.2.6.2 | 挂件制造、挂件组装 | 4d | 2012-10-26 | 2012-10-31 | 17 | 31d | 0d | 任雷 | 32h | 3,000 |
| 19 | 1.2.6.3 | 战车维修 | 4d | 2012-11-01 | 2012-11-06 | 18 | 31d |  | 任雷 | 32h | 2,000 |
| 20 | 1.2.7 | 小行星带 | 4d | 2012-09-28 | 2012-10-09 | 6 | 1d | 0d | 朱能 | 32h | 3,000 |
| 21 | 1.2.8 | 商城 | 4d | 2012-09-28 | 2012-10-09 | 6 | 15d | 0d | 高翔 | 32h | 3,000 |
| 22 | 1.2.9 | 拍卖 | 4d | 2012-10-10 | 2012-10-15 | 21 | 15d | 0d | 高翔 | 32h | 4,000 |
| 23 | 1.2.10 | 聊天 | 6d | 2012-10-16 | 2012-10-23 | 22 | 15d | 0d | 高翔 | 48h | 6,000 |
| 24 | 1.2.11 | 邮件 | 6d | 2012-10-24 | 2012-10-31 | 23 | 15d | 0d | 高翔 | 48h | 6,000 |
| 25 | 1.2.12 | 军团 | 6d | 2012-11-01 | 2012-11-08 | 24 | 15d | 0d | 高翔 | 48h | 6,000 |
| 26 | 1.2.13 | pvp房间 | 6d | 2012-11-09 | 2012-11-16 | 25 | 15d | 0d | 任雷 | 48h | 6,000 |
| 27 | 1.2.14 | 排名 | 4d | 2012-10-25 | 2012-10-30 | 11 | 23d | 0d | 刘伟 | 32h | 2,000 |
| 28 | 1.2.15 | 系统 | 3d | 2012-10-31 | 2012-11-02 | 27 | 23d | 0d | 刘伟 | 24h | 1,000 |

Notes:
- 9: 建造升级学习进度总览；
- 11: 科技学习、升级
- 12: 查看、图纸学习、捐献、道具使用
- 20: 坐标显示、资源星、 遗迹星、行星信息显示、进入按钮
- 21: 道具购买、赠送、暗晶储值接口
- 22: 玩家出售、购买
- 23: 世界、阵营、军团、私聊、好友列表、表情发送、热连接、玩家军官证
- 24: 发送资源、发送附件
- 25: 加入、创建、管理、军团舰制造、军团入口
- 26: 房间列表、房间创建、战车选择
- 27: 财富、军团、个人、pvp
- 28: 系统这块应该是不开发的。设置、账号、 登陆

| ID | WBS | Task | Type | Duration | Start | Finish | Predecessors | Total slack | Free slack | Constraint | Resources | Work | Cost |
| --- | --- | --- | --- | --- | --- | --- | --- | --- | --- | --- | --- | --- | --- |
| 29 | 1.3 | **第三阶段** |  | 30d | 2012-10-10 | 2012-11-20 |  | 1d |  |  |  | 240h | 72,000 |
| 30 | 1.3.1 | **要塞占领&PVE** |  | 20d | 2012-10-10 | 2012-11-06 |  | 1d |  |  |  | 160h | 48,000 |
| 31 | 1.3.1.1 | 战场地图的编辑 |  | 5d | 2012-10-10 | 2012-10-16 | 20 | 1d | 0d |  | 朱能 | 40h | 12,000 |
| 32 | 1.3.1.2 | 战场炮塔 |  | 5d | 2012-10-17 | 2012-10-23 | 31 | 1d | 0d |  | 朱能 | 40h | 12,000 |
| 33 | 1.3.1.3 | 战车移动攻击 |  | 5d | 2012-10-24 | 2012-10-30 | 32 | 1d | 0d |  | 朱能 | 40h | 12,000 |
| 34 | 1.3.1.4 | 特效添加 |  | 5d | 2012-10-31 | 2012-11-06 | 33 | 1d | 0d |  | 朱能 | 40h | 12,000 |
| 35 | 1.3.2 | **pvp** |  | 10d | 2012-11-07 | 2012-11-20 |  | 1d |  |  |  | 80h | 24,000 |
| 36 | 1.3.2.1 | pvp修改 |  | 5d | 2012-11-07 | 2012-11-13 | 34 | 1d | 0d |  | 朱能 | 40h | 12,000 |
| 37 | 1.3.2.2 | pvp贩卖 |  | 5d | 2012-11-14 | 2012-11-20 | 36 | 1d | 0d |  | 朱能 | 40h | 12,000 |
| 38 | 1.4 | **第四阶段** |  | 32d | 2012-11-05 | 2012-12-18 |  | 1d |  |  |  | 384h | 84,000 |
| 39 | 1.4.1 | **军团战** |  | 20d | 2012-11-20 | 2012-12-18 |  | 1d |  |  |  | 160h | 60,000 |
| 40 | 1.4.1.1 | 地图编辑 | milestone | 0d | 2012-11-20 | 2012-11-20 | 37 | 1d | 0d |  | 朱能 |  |  |
| 41 | 1.4.1.2 | 场景 | milestone | 0d | 2012-11-20 | 2012-11-20 | 40 | 1d | 0d |  | 朱能 |  |  |
| 42 | 1.4.1.3 | 玩法逻辑 |  | 20d | 2012-11-21 | 2012-12-18 | 41 | 1d | 0d |  | 朱能 | 160h | 60,000 |
| 43 | 1.4.1.4 | 军团战主UI | milestone | 0d | 2012-12-18 | 2012-12-18 | 42 | 1d | 0d |  | 朱能 |  |  |
| 44 | 1.4.1.5 | 对战动画 | milestone | 0d | 2012-12-18 | 2012-12-18 | 43 | 1d |  |  | 朱能 |  |  |
| 45 | 1.4.2 | **整合数据** |  | 18d | 2012-11-05 | 2012-11-28 |  | 15d |  |  |  | 224h | 24,000 |
| 46 | 1.4.2.1 | 场景衔接 |  | 5d | 2012-11-05 | 2012-11-09 | 28 | 23d | 0d |  | 刘伟 | 40h | 4,000 |
| 47 | 1.4.2.2 | 新手任务 |  | 10d | 2012-11-09 | 2012-11-22 | 25 | 19d |  |  | 高翔 | 80h | 12,000 |
| 48 | 1.4.2.3 | 登陆礼包 |  | 5d | 2012-11-12 | 2012-11-16 | 46 | 23d |  |  | 刘伟 | 40h | 2,000 |
| 49 | 1.4.2.4 | 相关数据统计 |  | 8d | 2012-11-19 | 2012-11-28 | 26 | 15d |  |  | 任雷 | 64h | 6,000 |
| 50 | 1.5 | 细节调整 |  | 22d | 2012-11-20 | 2012-12-19 |  | 0d |  | start no earlier than 2012-11-20 | 刘伟; 高翔; 任雷 | 360h | 30,000 |

Notes:
- 32: 修建、拆除、攻击，要塞中有小飞机飞出
- 37: 基地中心的小飞机飞出，炮塔攻击
